# Titulo do Projeto

How a schedule from ProjectLibre changed from version to version. A marks actual dates.

## Version 1 (saved 2026-10-12, file Cronograma Modelo POD.pod)

Note of the change: adicionado o streamlit e o dashboard; reorganizada toda a estrutura de pastas; att no readme, gitignore e requirements;

| ID | WBS | Task | Duration | Start | Finish | Predecessors |
| --- | --- | --- | --- | --- | --- | --- |
| 1 | 1 | **Titulo do Projeto** | 109d | 2026-02-02 | 2026-07-10 |  |
| 2 |  | GATE 1 - APROVAÇÃO DA IDEIA | 0d | 2026-02-02 | 2026-02-02 |  |
| 3 |  | FASE 2 - ESTUDO | 30d | 2026-02-02 | 2026-03-17 | 2 |
| 4 |  | GATE 2 - APROVAÇÃO DO ESTUDO | 0d | 2026-03-17 | 2026-03-17 | 3 |
| 5 | 5 | **FASE 3 - EXECUÇÃO** | 79d | 2026-03-18 | 2026-07-10 |  |
| 6 | 5.1 | **Reunião de Kick-off da execução** | 1d | 2026-03-18 | 2026-03-18 |  |
| 7 |  | Apresentar projeto, papéis e responsabilidades | 1d | 2026-03-18 | 2026-03-18 | 4 |
| 8 | 5.2 | **Cadastro** | 3d | 2026-03-19 | 2026-03-23 |  |
| 9 |  | Cadastro de MP e ME | 3d | 2026-03-19 | 2026-03-23 | 6 |
| 10 |  | Cadastrar PI e PE | 3d | 2026-03-19 | 2026-03-23 | 6 |
| 11 |  | Gerar código de PA/ descrição/ Código de Barra da Unidade de Venda (EAN)/ Código de Barra da Caixa Master (DUN) | 1d | 2026-03-19 | 2026-03-19 | 6 |
| 12 |  | Cadastrar PA no sistema (Dados FTR e Ficha Técnica de Embalagem (FCE)) | 3d | 2026-03-19 | 2026-03-23 | 6 |
| 13 |  | Cadastrar as contas contábeis, as informações de impostos nas filiais e grupo de comissão | 2d | 2026-03-19 | 2026-03-20 | 6 |
| 14 | 5.3 | **Documentação do produto** | 7d | 2026-03-24 | 2026-04-01 |  |
| 15 |  | DAD/ FCE | 3d | 2026-03-24 | 2026-03-26 | 8 |
| 16 |  | CMO/ CEE | 3d | 2026-03-24 | 2026-03-27 | 8 |
| 17 |  | FTR final | 3d | 2026-03-24 | 2026-03-26 | 8 |
| 18 |  | Especificações (ETE/ ETM/ ETP) | 3d | 2026-03-24 | 2026-03-26 | 8 |
| 19 |  | Lançamento da receita do produto no sistema | 2d | 2026-03-27 | 2026-03-30 | 15 |
| 20 |  | Checagem do cadastro na receita do produto no sistema | 2d | 2026-03-31 | 2026-04-01 | 19 |
| 21 | 5.4 | **Desenvolvimento de Embalagens** | 20d | 2026-03-18 | 2026-04-15 |  |
| 22 |  | Desenvolvimento de Layout da Embalagem | 10d | 2026-03-18 | 2026-03-31 | 4 |
| 23 |  | Aprovação layout | 3d | 2026-04-01 | 2026-04-03 | 22 |
| 24 |  | Planificação da arte com texto | 5d | 2026-04-06 | 2026-04-10 | 17, 23 |
| 25 |  | Arte Final | 2d | 2026-04-13 | 2026-04-14 | 24 |
| 26 |  | Envio da arte para fornecedor filme/ display e caixa | 1d | 2026-04-15 | 2026-04-15 | 25 |
| 27 | 1.4.5 | **Solicitações e Entregas** | 54d | 2026-04-13 | 2026-06-30 |  |
| 28 |  | Solicitações de Compras - MP e ME | 1d | 2026-04-13 | 2026-04-13 | 24 |
| 29 |  | Processo de Compra (Cotação) | 5d | 2026-04-14 | 2026-04-20 | 28 |
| 30 |  | Processo de Compra - Pedido MP e ME | 5d | 2026-04-22 | 2026-04-28 | 29 |
| 31 |  | Entrega de matéria prima | 30d | 2026-04-29 | 2026-06-09 | 30 |
| 32 |  | Entrega de filme/filme individual | 45d | 2026-04-29 | 2026-06-30 | 30 |
| 33 |  | Entrega de display/caixa | 40d | 2026-04-29 | 2026-06-23 | 30 |
| 34 |  | Cadastrar Preço Tabela de Vendas | 1d | 2026-07-01 | 2026-07-01 | 32, 31, 33 |
| 35 |  | Comunicado do Lançamento / Liberação de Vendas | 1d | 2026-07-01 | 2026-07-01 | 32, 31, 33 |
| 36 | 5.17 | **Produção do Produto** | 50d | 2026-04-29 | 2026-07-09 |  |
| 37 |  | Comunicado de início de fabricação ANVISA | 10d | 2026-04-29 | 2026-05-12 | 30 |
| 38 |  | Treinamento Equipe para Produção Piloto | 2d | 2026-07-01 | 2026-07-02 | 31, 32, 33, 37 |
| 39 |  | Acompanhamento da Produção | 2d | 2026-07-01 | 2026-07-02 | 38FF |
| 40 |  | Gerar Relatório de Produção | 1d | 2026-07-03 | 2026-07-03 | 39 |
| 41 |  | Conferência Cadastro x Relatório | 2d | 2026-07-06 | 2026-07-07 | 40 |
| 42 |  | Revisão cadastro do produto | 2d | 2026-07-08 | 2026-07-09 | 41 |
| 43 |  | Liberação de Faturamento | 1d | 2026-07-10 | 2026-07-10 | 42 |
| 44 |  | GATE 3 - APROVAÇÃO DO PROJETO | 0d | 2026-07-10 | 2026-07-10 | 43 |

## Version 2 (saved 2026-10-12, file Cronograma Parcial XML.xml)

Note of the change: adicionado o streamlit e o dashboard; reorganizada toda a estrutura de pastas; att no readme, gitignore e requirements;

Last finish 2026-07-10 → 2026-07-13 (+3d). Complete tasks 0 → 15.

Changed:

| ID | Task | Start | Finish | Duration | Complete |
| --- | --- | --- | --- | --- | --- |
| 1 | **Titulo do Projeto** |  | 2026-07-10 → 2026-07-13 (+3d) | 109d → 105d | 0% → 29% |
| 2 | GATE 1 - APROVAÇÃO DA IDEIA |  |  |  | 0% → 100% |
| 3 | FASE 2 - ESTUDO |  |  |  | 0% → 100% |
| 4 | GATE 2 - APROVAÇÃO DO ESTUDO | 2026-03-17 → 2026-03-18 (+1d) | 2026-03-17 → 2026-03-18 (+1d) |  | 0% → 100% |
| 5 | **FASE 3 - EXECUÇÃO** |  | 2026-07-10 → 2026-07-13 (+3d) | 79d → 75d | 0% → 18% |
| 6 | **Reunião de Kick-off da execução** |  | 2026-03-18 → 2026-03-19 (+1d) |  | 0% → 100% |
| 7 | Apresentar projeto, papéis e responsabilidades |  | 2026-03-18 → 2026-03-19 (+1d) |  | 0% → 100% |
| 8 | **Cadastro** |  | 2026-03-23 → 2026-03-24 (+1d) |  | 0% → 100% |
| 9 | Cadastro de MP e ME |  | 2026-03-23 → 2026-03-24 (+1d) |  | 0% → 100% |
| 10 | Cadastrar PI e PE |  | 2026-03-23 → 2026-03-24 (+1d) |  | 0% → 100% |
| 11 | Gerar código de PA/ descrição/ Código de Barra da Unidade de Venda (EAN)/ Código de Barra da Caixa Master (DUN) |  | 2026-03-19 → 2026-03-20 (+1d) |  | 0% → 100% |
| 12 | Cadastrar PA no sistema (Dados FTR e Ficha Técnica de Embalagem (FCE)) |  | 2026-03-23 → 2026-03-24 (+1d) |  | 0% → 100% |
| 13 | Cadastrar as contas contábeis, as informações de impostos nas filiais e grupo de comissão |  | 2026-03-20 → 2026-03-23 (+3d) |  | 0% → 100% |
| 14 | **Documentação do produto** |  | 2026-04-01 → 2026-04-02 (+1d) |  | 0% → 100% |
| 15 | DAD/ FCE |  | 2026-03-26 → 2026-03-27 (+1d) |  | 0% → 100% |
| 16 | CMO/ CEE |  |  | 3d → 3.5d | 0% → 100% |
| 17 | FTR final |  | 2026-03-26 → 2026-03-27 (+1d) |  | 0% → 100% |
| 18 | Especificações (ETE/ ETM/ ETP) |  | 2026-03-26 → 2026-03-27 (+1d) |  | 0% → 100% |
| 19 | Lançamento da receita do produto no sistema |  | 2026-03-30 → 2026-03-31 (+1d) |  | 0% → 100% |
| 20 | Checagem do cadastro na receita do produto no sistema |  | 2026-04-01 → 2026-04-02 (+1d) |  | 0% → 100% |
| 21 | **Desenvolvimento de Embalagens** | 2026-03-18 → 2026-03-19 (+1d) | 2026-04-15 → 2026-04-17 (+2d) | 20d → 19d | 0% → 29% |
| 22 | Desenvolvimento de Layout da Embalagem | 2026-03-18 → 2026-03-19 (+1d) | 2026-03-31 → 2026-04-02 (+2d) |  | 0% → 60% |
| 23 | Aprovação layout | 2026-04-01 → 2026-04-02 (+1d) | 2026-04-03 → 2026-04-06 (+3d) |  |  |
| 24 | Planificação da arte com texto | 2026-04-06 → 2026-04-07 (+1d) | 2026-04-10 → 2026-04-14 (+4d) |  |  |
| 25 | Arte Final | 2026-04-13 → 2026-04-14 (+1d) | 2026-04-14 → 2026-04-16 (+2d) |  |  |
| 26 | Envio da arte para fornecedor filme/ display e caixa | 2026-04-15 → 2026-04-16 (+1d) | 2026-04-15 → 2026-04-17 (+2d) |  |  |
| 27 | **Solicitações e Entregas** | 2026-04-13 → 2026-04-14 (+1d) | 2026-06-30 → 2026-07-01 (+1d) | 54d → 50d |  |
| 28 | Solicitações de Compras - MP e ME | 2026-04-13 → 2026-04-14 (+1d) | 2026-04-13 → 2026-04-15 (+2d) |  |  |
| 29 | Processo de Compra (Cotação) | 2026-04-14 → 2026-04-15 (+1d) | 2026-04-20 → 2026-04-22 (+2d) |  |  |
| 30 | Processo de Compra - Pedido MP e ME |  | 2026-04-28 → 2026-04-29 (+1d) |  |  |
| 31 | Entrega de matéria prima |  | 2026-06-09 → 2026-06-10 (+1d) |  |  |
| 32 | Entrega de filme/filme individual |  | 2026-06-30 → 2026-07-01 (+1d) |  |  |
| 33 | Entrega de display/caixa |  | 2026-06-23 → 2026-06-24 (+1d) |  |  |
| 34 | Cadastrar Preço Tabela de Vendas |  | 2026-07-01 → 2026-07-02 (+1d) |  |  |
| 35 | Comunicado do Lançamento / Liberação de Vendas |  | 2026-07-01 → 2026-07-02 (+1d) |  |  |
| 36 | **Produção do Produto** |  | 2026-07-09 → 2026-07-10 (+1d) | 50d → 48d |  |
| 37 | Comunicado de início de fabricação ANVISA |  | 2026-05-12 → 2026-05-13 (+1d) |  |  |
| 38 | Treinamento Equipe para Produção Piloto |  | 2026-07-02 → 2026-07-03 (+1d) |  |  |
| 39 | Acompanhamento da Produção |  | 2026-07-02 → 2026-07-03 (+1d) |  |  |
| 40 | Gerar Relatório de Produção |  | 2026-07-03 → 2026-07-06 (+3d) |  |  |
| 41 | Conferência Cadastro x Relatório |  | 2026-07-07 → 2026-07-08 (+1d) |  |  |
| 42 | Revisão cadastro do produto |  | 2026-07-09 → 2026-07-10 (+1d) |  |  |
| 43 | Liberação de Faturamento |  | 2026-07-10 → 2026-07-13 (+3d) |  |  |
| 44 | GATE 3 - APROVAÇÃO DO PROJETO | 2026-07-10 → 2026-07-13 (+3d) | 2026-07-10 → 2026-07-13 (+3d) |  |  |

## Version 3 (saved 2026-10-12, file Cronograma Completo XML.xml)

Note of the change: adicionado o streamlit e o dashboard; reorganizada toda a estrutura de pastas; att no readme, gitignore e requirements;

Last finish 2026-07-13 → 2026-07-10 (-3d). Complete tasks 15 → 36.

Changed:

| ID | Task | Start | Finish | Duration | Complete |
| --- | --- | --- | --- | --- | --- |
| 1 | **Titulo do Projeto** |  | 2026-07-13 → 2026-07-10 (-3d) | 105d → 104d | 29% → 100% |
| 5 | **FASE 3 - EXECUÇÃO** |  | 2026-07-13 → 2026-07-10 (-3d) | 75d → 74d | 18% → 100% |
| 21 | **Desenvolvimento de Embalagens** | 2026-03-19 → 2026-03-18 (-1d) | 2026-04-17 → 2026-04-16 (-1d) |  | 29% → 100% |
| 22 | Desenvolvimento de Layout da Embalagem | 2026-03-19 → 2026-03-18 (-1d) | 2026-04-02 → 2026-04-01 (-1d) |  | 60% → 100% |
| 23 | Aprovação layout | 2026-04-02 → 2026-04-01 (-1d) | 2026-04-06 → 2026-04-03 (-3d) |  | 0% → 100% |
| 24 | Planificação da arte com texto | 2026-04-07 → 2026-04-06 (-1d) | 2026-04-14 → 2026-04-13 (-1d) |  | 0% → 100% |
| 25 | Arte Final | 2026-04-14 → 2026-04-13 (-1d) | 2026-04-16 → 2026-04-15 (-1d) |  | 0% → 100% |
| 26 | Envio da arte para fornecedor filme/ display e caixa | 2026-04-16 → 2026-04-15 (-1d) | 2026-04-17 → 2026-04-16 (-1d) |  | 0% → 100% |
| 27 | **Solicitações e Entregas** | 2026-04-14 → 2026-04-13 (-1d) | 2026-07-01 → 2026-06-30 (-1d) |  | 0% → 100% |
| 28 | Solicitações de Compras - MP e ME | 2026-04-14 → 2026-04-13 (-1d) | 2026-04-15 → 2026-04-14 (-1d) |  | 0% → 100% |
| 29 | Processo de Compra (Cotação) | 2026-04-15 → 2026-04-14 (-1d) | 2026-04-22 → 2026-04-21 (-1d) |  | 0% → 100% |
| 30 | Processo de Compra - Pedido MP e ME | 2026-04-22 → 2026-04-21 (-1d) | 2026-04-29 → 2026-04-28 (-1d) |  | 0% → 100% |
| 31 | Entrega de matéria prima | 2026-04-29 → 2026-04-28 (-1d) | 2026-06-10 → 2026-06-09 (-1d) |  | 0% → 100% |
| 32 | Entrega de filme/filme individual | 2026-04-29 → 2026-04-28 (-1d) | 2026-07-01 → 2026-06-30 (-1d) |  | 0% → 100% |
| 33 | Entrega de display/caixa | 2026-04-29 → 2026-04-28 (-1d) | 2026-06-24 → 2026-06-23 (-1d) |  | 0% → 100% |
| 34 | Cadastrar Preço Tabela de Vendas | 2026-07-01 → 2026-06-30 (-1d) | 2026-07-02 → 2026-07-01 (-1d) |  | 0% → 100% |
| 35 | Comunicado do Lançamento / Liberação de Vendas | 2026-07-01 → 2026-06-30 (-1d) | 2026-07-02 → 2026-07-01 (-1d) |  | 0% → 100% |
| 36 | **Produção do Produto** | 2026-04-29 → 2026-04-28 (-1d) | 2026-07-10 → 2026-07-09 (-1d) |  | 0% → 100% |
| 37 | Comunicado de início de fabricação ANVISA | 2026-04-29 → 2026-04-28 (-1d) | 2026-05-13 → 2026-05-12 (-1d) |  | 0% → 100% |
| 38 | Treinamento Equipe para Produção Piloto | 2026-07-01 → 2026-06-30 (-1d) | 2026-07-03 → 2026-07-02 (-1d) |  | 0% → 100% |
| 39 | Acompanhamento da Produção | 2026-07-01 → 2026-06-30 (-1d) | 2026-07-03 → 2026-07-02 (-1d) |  | 0% → 100% |
| 40 | Gerar Relatório de Produção | 2026-07-03 → 2026-07-02 (-1d) | 2026-07-06 → 2026-07-03 (-3d) |  | 0% → 100% |
| 41 | Conferência Cadastro x Relatório | 2026-07-06 → 2026-07-03 (-3d) | 2026-07-08 → 2026-07-07 (-1d) |  | 0% → 100% |
| 42 | Revisão cadastro do produto | 2026-07-08 → 2026-07-07 (-1d) | 2026-07-10 → 2026-07-09 (-1d) |  | 0% → 100% |
| 43 | Liberação de Faturamento | 2026-07-10 → 2026-07-09 (-1d) | 2026-07-13 → 2026-07-10 (-3d) |  | 0% → 100% |
| 44 | GATE 3 - APROVAÇÃO DO PROJETO | 2026-07-13 → 2026-07-10 (-3d) | 2026-07-13 → 2026-07-10 (-3d) |  | 0% → 100% |

## Version 4 (saved 2026-10-15, file Cronograma Modelo XML.xml)

Note of the change: att no dashboard, att no .gitignore

Last finish stays 2026-07-10. Complete tasks 36 → 0.

Changed:

| ID | Task | Start | Finish | Duration | Complete |
| --- | --- | --- | --- | --- | --- |
| 1 | **Titulo do Projeto** |  |  | 104d → 109d | 100% → 0% |
| 2 | GATE 1 - APROVAÇÃO DA IDEIA |  |  |  | 100% → 0% |
| 3 | FASE 2 - ESTUDO |  |  |  | 100% → 0% |
| 4 | GATE 2 - APROVAÇÃO DO ESTUDO | 2026-03-18 → 2026-03-17 (-1d) | 2026-03-18 → 2026-03-17 (-1d) |  | 100% → 0% |
| 5 | **FASE 3 - EXECUÇÃO** |  |  | 74d → 79d | 100% → 0% |
| 6 | **Reunião de Kick-off da execução** |  | 2026-03-19 → 2026-03-18 (-1d) |  | 100% → 0% |
| 7 | Apresentar projeto, papéis e responsabilidades |  | 2026-03-19 → 2026-03-18 (-1d) |  | 100% → 0% |
| 8 | **Cadastro** |  | 2026-03-24 → 2026-03-23 (-1d) |  | 100% → 0% |
| 9 | Cadastro de MP e ME |  | 2026-03-24 → 2026-03-23 (-1d) |  | 100% → 0% |
| 10 | Cadastrar PI e PE |  | 2026-03-24 → 2026-03-23 (-1d) |  | 100% → 0% |
| 11 | Gerar código de PA/ descrição/ Código de Barra da Unidade de Venda (EAN)/ Código de Barra da Caixa Master (DUN) |  | 2026-03-20 → 2026-03-19 (-1d) |  | 100% → 0% |
| 12 | Cadastrar PA no sistema (Dados FTR e Ficha Técnica de Embalagem (FCE)) |  | 2026-03-24 → 2026-03-23 (-1d) |  | 100% → 0% |
| 13 | Cadastrar as contas contábeis, as informações de impostos nas filiais e grupo de comissão |  | 2026-03-23 → 2026-03-20 (-3d) |  | 100% → 0% |
| 14 | **Documentação do produto** |  | 2026-04-02 → 2026-04-01 (-1d) |  | 100% → 0% |
| 15 | DAD/ FCE |  | 2026-03-27 → 2026-03-26 (-1d) |  | 100% → 0% |
| 16 | CMO/ CEE |  |  | 3.5d → 3d | 100% → 0% |
| 17 | FTR final |  | 2026-03-27 → 2026-03-26 (-1d) |  | 100% → 0% |
| 18 | Especificações (ETE/ ETM/ ETP) |  | 2026-03-27 → 2026-03-26 (-1d) |  | 100% → 0% |
| 19 | Lançamento da receita do produto no sistema |  | 2026-03-31 → 2026-03-30 (-1d) |  | 100% → 0% |
| 20 | Checagem do cadastro na receita do produto no sistema |  | 2026-04-02 → 2026-04-01 (-1d) |  | 100% → 0% |
| 21 | **Desenvolvimento de Embalagens** |  | 2026-04-16 → 2026-04-15 (-1d) | 19d → 20d | 100% → 0% |
| 22 | Desenvolvimento de Layout da Embalagem |  | 2026-04-01 → 2026-03-31 (-1d) |  | 100% → 0% |
| 23 | Aprovação layout |  |  |  | 100% → 0% |
| 24 | Planificação da arte com texto |  | 2026-04-13 → 2026-04-10 (-3d) |  | 100% → 0% |
| 25 | Arte Final |  | 2026-04-15 → 2026-04-14 (-1d) |  | 100% → 0% |
| 26 | Envio da arte para fornecedor filme/ display e caixa |  | 2026-04-16 → 2026-04-15 (-1d) |  | 100% → 0% |
| 27 | **Solicitações e Entregas** |  |  | 50d → 54d | 100% → 0% |
| 28 | Solicitações de Compras - MP e ME |  | 2026-04-14 → 2026-04-13 (-1d) |  | 100% → 0% |
| 29 | Processo de Compra (Cotação) |  | 2026-04-21 → 2026-04-20 (-1d) |  | 100% → 0% |
| 30 | Processo de Compra - Pedido MP e ME | 2026-04-21 → 2026-04-22 (+1d) |  |  | 100% → 0% |
| 31 | Entrega de matéria prima | 2026-04-28 → 2026-04-29 (+1d) |  |  | 100% → 0% |
| 32 | Entrega de filme/filme individual | 2026-04-28 → 2026-04-29 (+1d) |  |  | 100% → 0% |
| 33 | Entrega de display/caixa | 2026-04-28 → 2026-04-29 (+1d) |  |  | 100% → 0% |
| 34 | Cadastrar Preço Tabela de Vendas | 2026-06-30 → 2026-07-01 (+1d) |  |  | 100% → 0% |
| 35 | Comunicado do Lançamento / Liberação de Vendas | 2026-06-30 → 2026-07-01 (+1d) |  |  | 100% → 0% |
| 36 | **Produção do Produto** | 2026-04-28 → 2026-04-29 (+1d) |  | 48d → 50d | 100% → 0% |
| 37 | Comunicado de início de fabricação ANVISA | 2026-04-28 → 2026-04-29 (+1d) |  |  | 100% → 0% |
| 38 | Treinamento Equipe para Produção Piloto | 2026-06-30 → 2026-07-01 (+1d) |  |  | 100% → 0% |
| 39 | Acompanhamento da Produção | 2026-06-30 → 2026-07-01 (+1d) |  |  | 100% → 0% |
| 40 | Gerar Relatório de Produção | 2026-07-02 → 2026-07-03 (+1d) |  |  | 100% → 0% |
| 41 | Conferência Cadastro x Relatório | 2026-07-03 → 2026-07-06 (+3d) |  |  | 100% → 0% |
| 42 | Revisão cadastro do produto | 2026-07-07 → 2026-07-08 (+1d) |  |  | 100% → 0% |
| 43 | Liberação de Faturamento | 2026-07-09 → 2026-07-10 (+1d) |  |  | 100% → 0% |
| 44 | GATE 3 - APROVAÇÃO DO PROJETO |  |  |  | 100% → 0% |
